# Nguyễn Thị Ngọc

Schedule from MS Project, 2024-01-30 to 2024-05-02, costs in ₫, A marks actual dates.

## Calendars

- Standard: Mon-Fri 08:00-12:00, 13:00-17:00; Sat-Sun off. Exceptions (off unless hours are given): 2024-04-18 (Nghỉ giỗ tổ hùng vương), 2024-04-30 to 2024-05-01 (Nghỉ 30/4, 1/5).

## Resources

| Resource | Rate |
| --- | --- |
| Quản lý dự án (Project Manager) | 150000 |
| Business Analyst 1 | 140000 |
| Senior Dev | 140000 |
| UX/UI Designer | 100000 |
| Front End Dev 1 | 100000 |
| Front End Dev 3 | 100000 |
| Back End Dev 1 | 130000 |
| Back End Dev 2 | 130000 |
| Tester 1 | 120000 |
| PC1 | 9000000 |
| PC2 | 9000000 |
| PC3 | 9000000 |
| PC4 | 9000000 |
| PC5 | 9000000 |
| PC6 | 9000000 |
| Chi phí phát sinh | 50000000 |
| Leader Tester | 140000 |
| Tester 2 | 120000 |
| PC7 | 9000000 |
| PC8 | 9000000 |
| PC9 | 9000000 |
| PC10 | 9000000 |
| PC11 | 9000000 |
| PC13 | 9000000 |
| Mặt bằng văn phòng điện nước | 93750 |
| Business Analyst 2 | 140000 |
| Máy quẹt thẻ từ thông minh | 1000000 |
| Camera 4 | 2000000 |
| Cổng barie tự động | 5000000 |
| Gờ giảm tốc | 500000 |
| Hàng rào inox | 12000000 |
| Camera 3 | 2000000 |
| Camera 2 | 1800000 |
| Camera 1 | 1800000 |
| Bảng LED | 15000000 |
| Đèn LED | 150000 |
| Máy in | 1000000 |
| Front End Dev 2 | 100000 |
| PC12 | 9000000 |

## Schedule

| ID | WBS | Task | Duration | Start | Finish | Predecessors | Complete | Remaining | Baseline start | Baseline finish | Baseline duration | Total slack | Resources | Work | Actual work | Cost | Baseline cost | Actual cost | Giá trị rủi ro | Cảnh báo mức độ | Khả năng xảy ra của rủi ro(%) | Text10 |
| --- | --- | --- | --- | --- | --- | --- | --- | --- | --- | --- | --- | --- | --- | --- | --- | --- | --- | --- | --- | --- | --- | --- |
| 1 | 1 | **QUẢN LÝ DỰ ÁN XÂY DỰNG PHẦN MỀM BÃI ĐỖ XE THÔNG MINH** | 65d? | 2024-01-30 A | 2024-05-02 |  | 97% | 2.13d? | 2024-01-30 | 2024-04-29 | 64d? | 0d |  | 1136h | 1072h | 137,060,000 | 133,760,000 | 129,060,000 |  |  |  |  |
| 2 | 1.1 | **1. Chuẩn bị dự án** | 4d? | 2024-01-30 A | 2024-02-02 A |  | 100% |  | 2024-01-30 | 2024-02-02 | 4d? |  |  | 56h | 56h | 6,700,000 | 8,080,000 | 6,700,000 |  |  |  |  |
| 3 | 1.1.1 | Gặp khách hàng | 2d | 2024-02-01 A | 2024-02-02 A |  | 100% |  | 2024-02-01 | 2024-02-02 | 2d |  | Business Analyst 1; Business Analyst 2; Quản lý dự án (Project Manager) | 8h | 8h | 1,000,000 | 1,120,000 | 1,000,000 | 2.5 | 2.5 | 50 | 2500000 |
| 4 | 1.1.2 | Thu thập tài liệu và thông tin từ các bên liên quan | 2d | 2024-01-30 A | 2024-02-01 A | 3 | 100% |  | 2024-01-30 | 2024-02-01 | 2d |  | Business Analyst 2; Business Analyst 1; Quản lý dự án (Project Manager) | 16h | 16h | 1,500,000 | 2,240,000 | 1,500,000 | 0.6 | 0.6 | 30 | 900000 |
| 5 | 1.1.3 | Xác định mục tiêu, phạm vi | 1d | 2024-02-01 A | 2024-02-01 A | 4 | 100% |  | 2024-02-01 | 2024-02-01 | 1d |  | Quản lý dự án (Project Manager) | 8h | 8h | 1,200,000 | 1,200,000 | 1,200,000 | 0.3 | 0.3 | 30 | 360000 |
| 6 | 1.1.4 | Xác định nguồn lực, nhân sự và ngân sách | 1d? | 2024-01-30 A | 2024-01-30 A | 4SS | 100% |  | 2024-01-30 | 2024-01-30 | 1d? |  | Quản lý dự án (Project Manager) | 8h | 8h | 1,200,000 | 1,200,000 | 1,200,000 | 1.8 | 1.8 | 60 | 2160000 |
| 7 | 1.1.5 | Xác định công cụ và nền tảng xây dựng phần mềm | 1d | 2024-01-31 A | 2024-01-31 A | 6 | 100% |  | 2024-01-31 | 2024-01-31 | 1d |  | Senior Dev | 8h | 8h | 800,000 | 1,120,000 | 800,000 | 0.2 | 0.2 | 20 | 160000 |
| 8 | 1.1.6 | Lập bảng đầu mục các công việc cần làm trong dự án | 1d | 2024-01-31 A | 2024-01-31 A | 7 | 100% |  | 2024-01-31 | 2024-01-31 | 1d |  | Quản lý dự án (Project Manager) | 8h | 8h | 1,000,000 | 1,200,000 | 1,000,000 |  |  | 50 | 1000000 |
| 9 | 1.2 | **2. Xây dựng hệ thống phần mềm** | 4d | 2024-02-07 A | 2024-02-12 A |  | 100% |  | 2024-02-07 | 2024-02-12 | 4d |  |  | 32h | 32h | 4,360,000 | 4,480,000 | 4,360,000 |  |  |  |  |
| 10 | 1.2.1 | **Phân tích yêu cầu** | 4d | 2024-02-07 A | 2024-02-12 A |  | 100% |  | 2024-02-07 | 2024-02-12 | 4d |  |  | 32h | 32h | 4,360,000 | 4,480,000 | 4,360,000 |  |  |  |  |
| 11 | 1.2.1.1 | Xác định các chức năng chính | 1d | 2024-02-07 A | 2024-02-07 A | 8FS+2d | 100% |  | 2024-02-07 | 2024-02-07 | 1d |  | Business Analyst 1 | 8h | 8h | 1,000,000 | 1,120,000 | 1,000,000 | 1.8 | 1.8 | 60 | 1800000 |
| 12 | 1.2.1.2 | Xây dựng tài liệu đặc tả | 3d | 2024-02-08 A | 2024-02-12 A | 11 | 100% |  | 2024-02-08 | 2024-02-12 | 3d |  | Business Analyst 2 | 24h | 24h | 3,360,000 | 3,360,000 | 3,360,000 | 0.3 | 0.3 | 30 | 1008000 |
| 13 | 1.3 | **3. Thiết kế hệ thống phần mềm** | 33d | 2024-02-01 A | 2024-03-18 A |  | 100% |  | 2024-02-01 | 2024-03-18 | 33d |  |  | 524h | 524h | 61,300,000 | 60,320,000 | 61,300,000 |  |  |  |  |
| 14 | 1.3.1 | **3.1 Thiết kế chức năng, giao diện** | 16d | 2024-02-15 A | 2024-03-07 A |  | 100% |  | 2024-02-15 | 2024-03-07 | 16d |  |  | 284h | 284h | 29,900,000 | 28,400,000 | 29,900,000 |  |  |  |  |
| 15 | 1.3.1.1 | **Chức năng quản lý vé xe** | 8d | 2024-02-15 A | 2024-02-26 A |  | 100% |  | 2024-02-15 | 2024-02-26 | 8d |  |  | 72h | 72h | 7,500,000 | 7,200,000 | 7,500,000 |  |  |  |  |
| 16 | 1.3.1.1.1 | Hiện thông tin vé xe(vé tháng, vé ngày, vé giờ) | 3d | 2024-02-15 A | 2024-02-19 A | 12FS+2d | 100% |  | 2024-02-15 | 2024-02-19 | 3d |  | Front End Dev 1 [50%]; UX/UI Designer [50%] | 24h | 24h | 2,500,000 | 2,400,000 | 2,500,000 | 2.8 | 2.8 | 70 | 7000000 |
| 17 | 1.3.1.1.2 | Thông tin vé: thời gian ra vào, thời gian đỗ xe, loại xe, vị trí | 3d | 2024-02-15 A | 2024-02-19 A | 16 | 100% |  | 2024-02-15 | 2024-02-19 | 3d |  | UX/UI Designer [50%]; Front End Dev 2 [50%] | 24h | 24h | 2,500,000 | 2,400,000 | 2,500,000 | 2.8 | 2.8 | 70 | 7000000 |
| 18 | 1.3.1.1.3 | Phương thức thanh toán (thẻ, tiền mặt, thanh toán trực tuyến) | 3d | 2024-02-22 A | 2024-02-26 A | 17 | 100% |  | 2024-02-22 | 2024-02-26 | 3d |  | Front End Dev 3 [50%]; UX/UI Designer [50%] | 24h | 24h | 2,500,000 | 2,400,000 | 2,500,000 | 2.8 | 2.8 | 70 | 7000000 |
| 19 | 1.3.1.2 | **Chức năng quản lý ra vào** | 5d | 2024-02-19 A | 2024-02-23 A |  | 100% |  | 2024-02-19 | 2024-02-23 | 5d |  |  | 48h | 48h | 5,000,000 | 4,800,000 | 5,000,000 |  |  |  |  |
| 20 | 1.3.1.2.1 | Kết nối thiết bị: Tích hợp với camera, barrier, máy in,… | 3d | 2024-02-19 A | 2024-02-21 A | 16 | 100% |  | 2024-02-19 | 2024-02-21 | 3d |  | Front End Dev 1 [50%]; UX/UI Designer [50%] | 24h | 24h | 2,500,000 | 2,400,000 | 2,500,000 | 2.5 | 2.5 | 50 | 6250000 |
| 21 | 1.3.1.2.2 | Phân chia loại xe, hiển thị giá vé, tính giá vé tự động | 3d | 2024-02-21 A | 2024-02-23 A | 17 | 100% |  | 2024-02-21 | 2024-02-23 | 3d |  | Front End Dev 2 [50%]; UX/UI Designer [50%] | 24h | 24h | 2,500,000 | 2,400,000 | 2,500,000 | 1.2 | 1.2 | 30 | 3000000 |
| 22 | 1.3.1.3 | **Chức năng đỗ xe** | 3d | 2024-02-28 A | 2024-03-01 A |  | 100% |  | 2024-02-28 | 2024-03-01 | 3d |  |  | 60h | 60h | 5,100,000 | 6,000,000 | 5,100,000 |  |  |  |  |
| 23 | 1.3.1.3.1 | Nhận thông tin bản vẽ sơ đồ của bãi đỗ xe | 3d | 2024-02-28 A | 2024-03-01 A | 18 | 100% |  | 2024-02-28 | 2024-03-01 | 3d |  | Front End Dev 3 [50%] | 20h | 20h | 1,700,000 | 2,000,000 | 1,700,000 | 1.8 | 1.8 | 60 | 3060000 |
| 24 | 1.3.1.3.2 | Thông tin vị trí còn trống. | 3d | 2024-02-28 A | 2024-03-01 A | 20 | 100% |  | 2024-02-28 | 2024-03-01 | 3d |  | Front End Dev 1 [50%] | 20h | 20h | 1,700,000 | 2,000,000 | 1,700,000 | 0.3 | 0.3 | 30 | 510000 |
| 25 | 1.3.1.3.3 | Hỗ trợ tìm kiếm vị trí đỗ xe phù hợp. | 3d | 2024-02-28 A | 2024-03-01 A | 21 | 100% |  | 2024-02-28 | 2024-03-01 | 3d |  | Front End Dev 2 [50%] | 20h | 20h | 1,700,000 | 2,000,000 | 1,700,000 |  |  | 20 | 1700000 |

Notes:
- 3: Tên rủi ro: Khách hàng thay đổi yêu cầu một cách bất ngờ sau cuộc họp. / Giải pháp phòng chống: Chuẩn bị các phương pháp lưu trữ khác về các cuộc trao đổi với khách hàng: ghi âm, ghi chú, hình ảnh,… / Giải pháp khắc phục: Giao tiếp thẳng thắn rõ ràng, thông báo xác định lại cho các bên liên quan
- 4: Tên rủi ro: Bỏ lỡ các điểm quan trọng do không giao tiếp kịp thời với các bên liên quan. / Giải pháp phòng chống: Sử dụng công cụ quản lý và giao tiếp đều đặn với các bên liên quan / Giải pháp khắc phục: Tổ chức cuộc họp khẩn tránh bỏ sót các thông tin để thảo luận đưa ra quyết định
- 5: Tên rủi ro: Phạm vi dự án mở rộng không kiểm soát / Giải pháp phòng chống: Quản lý yêu cầu, theo dõi chặt chẽ và xác nhận yêu cầu mới / Giải pháp khắc phục: Sử dụng công cụ quản lý, để đảm bảo mọi yêu cầu được đánh giá cẩn thận trước khi thực hiện
- 6: Tên rủi ro: Tăng chi phí không ngờ hoặc cắt giảm ngân sách do khách thêm/giảm chức năng phần mềm. / Giải pháp phòng chống: Dự trữ ngân sách và xác định các chức năng quan trọng trước để giảm rủi ro tài chính do thay đổi / Giải pháp khắc phục: Đàm phán chi phí với khách hàng và đề xuất lựa chọn thay thế/cắt giảm tính năng ít quan trọng
- 7: Tên rủi ro: Phụ thuộc vào công nghệ độc quyền có thể dẫn đến vấn đề về chi phí / Giải pháp phòng chống: Sử dụng công nghệ mở có cộng đồng hỗ trợ và không phụ thuộc vào nhà cung cấp cụ thể / Giải pháp khắc phục: Xem xét kỹ lưỡng các lựa chọn công nghệ và chi phí liên quan trước khi quyết định
- 8: Tên rủi ro: Không xác định đúng mức độ ưu tiên hoặc ước lượng thời gian không chính xác. / Giải pháp phòng chống: Thực hiện cân nhắc kỹ lưỡng ước lượng thời gian và ưu tiên công việc có giá trị quan trọng / Giải pháp khắc phục: Điều chỉnh kế hoạch chính xác, nhanh chóng áp dụng các biện pháp để điều chỉnh kế hoạch
- 11: Tên rủi ro: Thay đổi yêu cầu thường xuyên do sự thay đổi nhu cầu thị trường hoặc thay đổi chiến lược kinh doanh của khách hàng. / Giải pháp phòng chống: Sử dụng các phương pháp quản lý dự án Agile/Scrum linh hoạt cho phép dễ dàng thay đổi và điều chỉnh yêu cầu. / Giải pháp khắc phục: Khi có thay đổi yêu cầu, dùng một quy trình xử lý thay đổi (Change Request Process) chính thức sẽ giúp đánh giá, thỏa thuận và triển khai các yêu cầu mới một cách có kiểm soát.
- 12: Tên rủi ro: Kỹ thuật viết tài liệu không phù hợp, không đồng nhất thực tế / Giải pháp phòng chống: Quy chuẩn tài liệu, xây dựng một bộ quy chuẩn tài liệu rõ ràng để đảm bảo tính nhất quán và phù hợp với thực tế của tất cả tài liệu / Giải pháp khắc phục: Thường xuyên rà soát và cập tài liệu để phản ánh chính xác thông tin hiện có và đồng bộ với thực tiễn áp dụng.
- 16: Tên rủi ro: Lập trình thiếu/sai sót thông tin thanh toán / Giải pháp phòng chống: Tăng cường kiểm thử tự động / Giải pháp khắc phục: Thay đổi quy trình kiểm soát các thay đổi trong các đoạn mã để đảm bảo theo dõi các sai sót
- 17: Tên rủi ro: Lập trình tính giá không chính xác/không hiện thông tin quan trọng. / Giải pháp phòng chống: Cung cấp đầy đủ các thông tin các công thức tính toán, chú thích rõ ràng dễ hiểu / Giải pháp khắc phục: Nên chuẩn bị và bàn bạc lại chốt các công thức tính toán
- 18: Tên rủi ro: Sai sót về thông tin vé có thể dẫn đến việc tính giá không chính xác/bảo mật thanh toán / Giải pháp phòng chống: Đối chiếu thông tinh ngân hàng, các phương thức thanh toán / Giải pháp khắc phục: Kiểm thử bảo mật xuyên suốt trong quá trình phát triển dự án
- 20: Tên rủi ro: Sự cố phần mềm không tích hợp với camera, barrier, máy in ảnh hưởng đến việc ra vào. / Giải pháp phòng chống: Đầu tư vào việc kiểm thử hệ thống tích hợp, đào tạo sử dụng và dùng các phần mềm hỗ trợ kết nối giữa phần cứng và phần mềm / Giải pháp khắc phục: Phát triển một quy trình xử lý sự cố rõ ràng. Chuẩn bị sẵn hỗ trợ kỹ thuật để xử lý sự cố ngay lập tức
- 21: Tên rủi ro: Sai sót trong quá trình ghi nhận dữ liệu thông tin xe có thể gây thất thoát doanh thu / Giải pháp phòng chống: Sử dụng hệ thống nhận diện tự động để tăng chính xác trong việc thu thập thông tin xe và đối chiếu định kỳ dữ liệu ghi nhận với báo cáo tài chính / Giải pháp khắc phục: Đánh giá lại quy trình, phát hiện sai sót, tiến hành đối chiếu và điều chỉnh. Thực hiện điều tra nguyên nhân của các sai sót và áp dụng các biện pháp cải tiến quy trình để ngăn ngừa lặp lại.
- 23: Tên rủi ro: Bản vẽ sai/thiếu / Giải pháp phòng chống: Kiểm tra và xác nhận bản vẽ. Quản lý phiên bản nhận diện bản vẽ / Giải pháp khắc phục: Tổ chức cuộc họp khẩn cấp và cập nhật thông tin. Kiểm tra lại tất cả các bản vẽ liên quan
- 24: Tên rủi ro: Thông tin vị trí còn trống có thể không chính xác do lỗi cập nhật dữ liệu hoặc lỗi hệ thống. / Giải pháp phòng chống: Thực hiện kiểm tra định kỳ, cập nhập và đồng bộ hóa.Thường xuyên sao lưu dữ liệu để phòng tránh mất mát thông tin. / Giải pháp khắc phục: Phục hồi từ bản sao lưu và thông báo khẩn cho người dùng về vấn đề và cung cấp thông tin hướng dẫn tạm thời.
- 25: Tên rủi ro: Khó khăn cho người dùng trong việc tìm kiếm và dẫn đường đến vị trí đỗ xe do thiếu sự chính xác hoặc trực quan. / Giải pháp phòng chống: Cung cấp bản đồ dễ hiểu, hướng dẫn chi tiết và chính xác. Sử dụng hệ thống dẫn đường thông minh / Giải pháp khắc phục: Cài đặt các điểm hỗ trợ trực tiếp hoặc hotline. Cải tiến hệ thống dẫn đường áp dụng giải pháp công nghệ mới để hỗ trợ tốt hơn.

| ID | WBS | Task | Duration | Start | Finish | Predecessors | Complete | Baseline start | Baseline finish | Baseline duration | Resources | Work | Actual work | Cost | Baseline cost | Actual cost | Khả năng xảy ra của rủi ro(%) | Text10 | Giá trị rủi ro | Cảnh báo mức độ |
| --- | --- | --- | --- | --- | --- | --- | --- | --- | --- | --- | --- | --- | --- | --- | --- | --- | --- | --- | --- | --- |
| 26 | 1.3.1.4 | **Chức năng giám sát** | 3d | 2024-03-01 A | 2024-03-05 A |  | 100% | 2024-03-01 | 2024-03-05 | 3d |  | 56h | 56h | 7,500,000 | 5,600,000 | 7,500,000 |  |  |  |  |
| 27 | 1.3.1.4.1 | Ghi hình, lưu trữ dữ liệu hình ảnh. | 3d | 2024-03-01 A | 2024-03-05 A | 23 | 100% | 2024-03-01 | 2024-03-05 | 3d | Front End Dev 3 [50%]; UX/UI Designer [50%] | 20h | 20h | 2,500,000 | 2,000,000 | 2,500,000 | 60 | 7500000 |  |  |
| 28 | 1.3.1.4.2 | Hỗ trợ nhận diện biển số xe. | 3d | 2024-03-01 A | 2024-03-05 A | 24 | 100% | 2024-03-01 | 2024-03-05 | 3d | Front End Dev 1 [50%]; UX/UI Designer [50%] | 20h | 20h | 2,500,000 | 2,000,000 | 2,500,000 | 50 | 3750000 | 1.5 | 1.5 |
| 29 | 1.3.1.4.3 | Sao lưu dự phòng | 2d | 2024-03-01 A | 2024-03-04 A | 25 | 100% | 2024-03-01 | 2024-03-04 | 2d | Front End Dev 2; UX/UI Designer | 16h | 16h | 2,500,000 | 1,600,000 | 2,500,000 | 20 | 500000 | 0.2 | 0.2 |
| 30 | 1.3.1.5 | **Chức năng thống kế** | 3d | 2024-03-05 A | 2024-03-07 A |  | 100% | 2024-03-05 | 2024-03-07 | 3d |  | 48h | 48h | 4,800,000 | 4,800,000 | 4,800,000 |  |  |  |  |
| 31 | 1.3.1.5.1 | Báo cáo về doanh thu, số lượng lượt xe ra vào, loại xe gửi | 3d | 2024-03-05 A | 2024-03-07 A | 27 | 100% | 2024-03-05 | 2024-03-07 | 3d | Front End Dev 3 | 24h | 24h | 2,400,000 | 2,400,000 | 2,400,000 | 40 | 960000 | 0.4 | 0.4 |
| 32 | 1.3.1.5.2 | Hỗ trợ phân tích dữ liệu dự báo về nhu cầu sử dụng bãi đỗ xe | 3d | 2024-03-05 A | 2024-03-07 A | 31SS | 100% | 2024-03-05 | 2024-03-07 | 3d | Front End Dev 2 | 24h | 24h | 2,400,000 | 2,400,000 | 2,400,000 | 30 | 1440000 | 0.6 | 0.6 |
| 33 | 1.3.2 | **3.2. Thiết kế dữ liệu** | 3d | 2024-02-19 A | 2024-02-21 A |  | 100% | 2024-02-19 | 2024-02-21 | 3d |  | 24h | 24h | 3,120,000 | 3,040,000 | 3,120,000 |  |  |  |  |
| 34 | 1.3.2.1 | Thông tin xe | 1d | 2024-02-19 A | 2024-02-19 A | 16 | 100% | 2024-02-19 | 2024-02-19 | 1d | Tester 1 | 8h | 8h | 1,000,000 | 960,000 | 1,000,000 | 30 | 300000 | 0.3 | 0.3 |
| 35 | 1.3.2.2 | Giá vé (phụ thuộc loại xe, thời gian ra vào) | 1d | 2024-02-19 A | 2024-02-19 A | 34 | 100% | 2024-02-19 | 2024-02-19 | 1d | Tester 2 | 8h | 8h | 1,000,000 | 960,000 | 1,000,000 | 20 | 200000 | 0.2 | 0.2 |
| 36 | 1.3.2.3 | Xác định quan hệ và ràng buộc | 2d | 2024-02-20 A | 2024-02-21 A | 35 | 100% | 2024-02-20 | 2024-02-21 | 2d | Leader Tester [50%] | 8h | 8h | 1,120,000 | 1,120,000 | 1,120,000 | 40 | 1344000 | 1.2 | 1.2 |
| 37 | 1.3.3 | **3.3. Thiết kế cách hoạt động bên trong hệ thống(Backend)** | 33d | 2024-02-01 A | 2024-03-18 A |  | 100% | 2024-02-01 | 2024-03-18 | 33d |  | 216h | 216h | 28,280,000 | 28,880,000 | 28,280,000 |  |  |  |  |
| 38 | 1.3.3.1 | Xây dựng, kiểm tra API | 8d | 2024-02-01 A | 2024-02-12 A |  | 100% | 2024-02-01 | 2024-02-12 | 8d |  |  |  |  |  |  |  |  |  |  |
| 39 | 1.3.3.2 | **Phát triển module** | 18d | 2024-02-22 A | 2024-03-18 A |  | 100% | 2024-02-22 | 2024-03-18 | 18d |  | 200h | 200h | 26,200,000 | 26,800,000 | 26,200,000 |  |  |  |  |
| 40 | 1.3.3.2.1 | Phát triển chức năng quản lý vé xe | 3d | 2024-02-22 A | 2024-02-26 A | 36 | 100% | 2024-02-22 | 2024-02-26 | 3d | Back End Dev 1 | 24h | 24h | 3,000,000 | 3,120,000 | 3,000,000 | 60 | 5400000 | 1.8 | 1.8 |
| 41 | 1.3.3.2.2 | Phát triển chức năng quản lý ra vào | 3d | 2024-02-22 A | 2024-02-26 A | 40SS | 100% | 2024-02-22 | 2024-02-26 | 3d | Back End Dev 2 | 24h | 24h | 3,000,000 | 3,120,000 | 3,000,000 | 50 | 4500000 | 1.5 | 1.5 |
| 42 | 1.3.3.2.3 | Phát triển chức năng đỗ xe | 3d | 2024-02-27 A | 2024-02-29 A | 40 | 100% | 2024-02-27 | 2024-02-29 | 3d | Back End Dev 1 | 24h | 24h | 3,000,000 | 3,120,000 | 3,000,000 | 60 | 5400000 | 1.8 | 1.8 |
| 43 | 1.3.3.2.4 | Phát triển chức năng giám sát | 3d | 2024-02-27 A | 2024-02-29 A | 41 | 100% | 2024-02-27 | 2024-02-29 | 3d | Back End Dev 2 | 24h | 24h | 3,000,000 | 3,120,000 | 3,000,000 | 40 | 3600000 | 1.2 | 1.2 |
| 44 | 1.3.3.2.5 | Phát triển chức năng thống kê | 3d | 2024-03-01 A | 2024-03-05 A | 42 | 100% | 2024-03-01 | 2024-03-05 | 3d | Back End Dev 1 | 24h | 24h | 3,000,000 | 3,120,000 | 3,000,000 | 50 | 4500000 | 1.5 | 1.5 |
| 45 | 1.3.3.2.6 | Tích hợp các chức năng | 10d | 2024-03-05 A | 2024-03-18 A | 44FS+1d | 100% | 2024-03-05 | 2024-03-18 | 10d | Senior Dev | 80h | 80h | 11,200,000 | 11,200,000 | 11,200,000 | 70 | 31360000 | 2.8 | 2.8 |
| 46 | 1.3.3.3 | **Tối ưu hệ thống** | 2d | 2024-03-01 A | 2024-03-04 A |  | 100% | 2024-03-01 | 2024-03-04 | 2d |  | 16h | 16h | 2,080,000 | 2,080,000 | 2,080,000 |  |  |  |  |
| 47 | 1.3.3.3.1 | Tương tác người dùng với hệ thống | 1d | 2024-03-01 A | 2024-03-01 A | 44SS | 100% | 2024-03-01 | 2024-03-01 | 1d | Back End Dev 2 | 8h | 8h | 1,040,000 | 1,040,000 | 1,040,000 | 30 | 312000 | 0.3 | 0.3 |
| 48 | 1.3.3.3.2 | Hiệu suất | 1d | 2024-03-04 A | 2024-03-04 A | 47 | 100% | 2024-03-04 | 2024-03-04 | 1d | Back End Dev 2 | 8h | 8h | 1,040,000 | 1,040,000 | 1,040,000 | 20 | 208000 | 0.2 | 0.2 |
| 49 | 1.4 | **4. Kiểm thử** | 26d | 2024-02-13 A | 2024-03-19 A |  | 100% | 2024-02-13 | 2024-03-19 | 26d |  | 388h | 388h | 47,180,000 | 46,160,000 | 47,180,000 |  |  |  |  |
| 50 | 1.4.1 | Lập kế hoạch các hạng mục cần thiết kiểm thử | 1d | 2024-02-13 A | 2024-02-13 A | 12SS+3d | 100% | 2024-02-13 | 2024-02-13 | 1d | Leader Tester | 8h | 8h | 1,200,000 | 1,120,000 | 1,200,000 | 20 | 240000 | 0.2 | 0.2 |
| 51 | 1.4.2 | Viết testcase | 2d | 2024-02-14 A | 2024-02-15 A | 50 | 100% | 2024-02-14 | 2024-02-15 | 2d | Tester 1 | 16h | 16h | 1,500,000 | 1,920,000 | 1,500,000 | 30 | 900000 | 0.6 | 0.6 |
| 52 | 1.4.3 | Kiểm thử giao diện | 1d | 2024-02-16 A | 2024-02-16 A | 51 | 100% | 2024-02-16 | 2024-02-16 | 1d | Tester 2 | 8h | 8h | 1,500,000 | 960,000 | 1,500,000 | 40 | 600000 | 0.4 | 0.4 |
| 53 | 1.4.4 | Kiểm thử API | 1d | 2024-03-05 A | 2024-03-05 A | 52 | 100% | 2024-03-05 | 2024-03-05 | 1d | Leader Tester | 8h | 8h | 1,200,000 | 1,120,000 | 1,200,000 | 50 | 600000 | 0.5 | 0.5 |
| 54 | 1.4.5 | Kiểm thử phi chức năng: tương tác giữa các màn hình, hiệu suất, bảo mật,... | 3d | 2024-03-06 A | 2024-03-08 A | 53SS | 100% | 2024-03-06 | 2024-03-08 | 3d | Tester 1 | 24h | 24h | 3,000,000 | 2,880,000 | 3,000,000 | 50 | 1500000 | 0.5 | 0.5 |
| 55 | 1.4.6 | Kiểm thử toàn bộ hệ thống | 3d | 2024-03-11 A | 2024-03-13 A | 54 | 100% | 2024-03-11 | 2024-03-13 | 3d | Leader Tester [50%]; UX/UI Designer [50%] | 24h | 24h | 3,500,000 | 2,880,000 | 3,500,000 | 80 | 11200000 | 3.2 | 3.2 |
| 56 | 1.4.7 | Báo cáo lỗi | 3d | 2024-03-06 A | 2024-03-08 A | 52 | 100% | 2024-03-06 | 2024-03-08 | 3d | Leader Tester [50%]; Tester 1 [50%]; Tester 2 [50%] | 12h | 12h | 1,680,000 | 1,680,000 | 1,680,000 | 40 | 672000 | 0.4 | 0.4 |
| 57 | 1.4.8 | Sửa lỗi | 6d | 2024-03-12 A | 2024-03-19 A | 56FS+1d | 100% | 2024-03-12 | 2024-03-19 | 6d | Back End Dev 1; Back End Dev 2; Front End Dev 1; Front End Dev 3; Front End Dev 2; Senior Dev | 288h | 288h | 33,600,000 | 33,600,000 | 33,600,000 | 30 | 20160000 | 0.6 | 0.6 |

Notes:
- 27: Tên rủi ro: Không nhận diện phân tích được hình ảnh biển số xe / Giải pháp phòng chống: Tối ưu hóa camera và bảo trì định kỳ camera có độ phân giải cao. Tiến hành thử nghiệm định kỳ để kiểm tra hiệu suất của hệ thống nhận diện biển số xe. / Giải pháp khắc phục: Kiểm tra, bảo trì thiết bị nhận diện biển số không chính xác và kiểm tra phần cứng liên quan. Cải thiện tập dữ liệu và sử dụng giải pháp phần cứng thay thế
- 28: Tên rủi ro: Lưu trữ dữ liệu nhận diện biển số cần đảm bảo tuân thủ quy định bảo mật và riêng tư. / Giải pháp phòng chống: Áp dụng thuật toán mã hóa mạnh mẽ để bảo vệ dữ liệu. Kiểm thử bảo mật định kỳ / Giải pháp khắc phục: Nhận diện vi phạm bảo mật dữ liệu thông báo nhanh chóng, ngay lập tức thông báo cho cơ quan quản lý và người dùng bị ảnh hưởng. Phục hồi và xử lý hậu quả
- 29: Tên rủi ro: Sự cố hệ thống lưu trữ có thể gây mất mát thông tin. / Giải pháp phòng chống: Thiết lập hệ thống sao lưu định kỳ và tự động. Sử dụng dịch vụ đám mây. Cài đặt hệ thống UPS và phục hồi sau sự cố để bảo vệ dữ liệu trong trường hợp nguồn điện bị cắt. / Giải pháp khắc phục: Sự cố xảy ra, nhanh chóng phục hồi dữ liệu từ bản sao lưu gần nhất. Điều tra nguyên nhân
- 31: Tên rủi ro: Sai sót trong quá trình xử lý và phân tích dữ liệu có thể gây ra kết quả sai lệch. / Giải pháp phòng chống: Tạo quy trình chuẩn mực cho việc xử lý và phân tích dữ liệu. Thường xuyên kiểm tra và xác minh dữ liệu để đảm bảo tính chính xác. / Giải pháp khắc phục: Phát hiện lỗi, nhanh chóng sửa chữa và thông báo cho tất cả các bên liên quan. Xem xét nhật ký kiểm toán để xác định nơi sai sót xảy ra.
- 32: Tên rủi ro: Các báo cáo không chính xác hoặc không thể tạo ra báo cáo do lỗi hệ thống / Giải pháp phòng chống: Sử dụng công cụ tự động hóa báo cáo để giảm thiểu sai sót. Bảo trì hệ thống định kỳ để ngăn chặn lỗi phát sinh. / Giải pháp khắc phục: Triển khai kế hoạch đáp ứng sự cố tức thì khi phát hiện báo cáo không chính xác. Sử dụng dữ liệu sao lưu để phục hồi báo cáo nếu cần thiết.
- 34: Tên rủi ro: Dữ liệu từ các nguồn khác nhau có thể không tương thích với nhau / Giải pháp phòng chống: Dùng công cụ tích hợp dữ liệu để chuyển đổi và chuẩn hóa dữ liệu từ các nguồn khác nhau. Thiết lập mô hình dữ liệu chung để đảm bảo thông tin tương thích. / Giải pháp khắc phục: Làm sạch dữ liệu bằng cách loại bỏ/sửa chữa dữ liệu không tương thích. Tham khảo ý kiến của chuyên gia dữ liệu
- 35: Tên rủi ro: Dữ liệu từ các nguồn khác nhau có thể không tương thích với nhau / Giải pháp phòng chống: Dùng công cụ tích hợp dữ liệu để chuyển đổi và chuẩn hóa dữ liệu từ các nguồn khác nhau. Thiết lập mô hình dữ liệu chung để đảm bảo thông tin tương thích. / Giải pháp khắc phục: Làm sạch dữ liệu bằng cách loại bỏ/sửa chữa dữ liệu không tương thích. Tham khảo ý kiến của chuyên gia dữ liệu
- 36: Tên rủi ro: Sai sót trong định nghĩa quan hệ và ràng buộc dữ liệu / Giải pháp phòng chống: Thường xuyên xem xét và cập nhật sơ đồ cơ sở dữ liệu. Đánh giá khi triển khai quan hệ và ràng buộc dữ liệu. / Giải pháp khắc phục: Điều chỉnh ngay khi phát hiện ràng buộc dữ liệu không phù hợp. Cập nhật tài liệu kỹ thuật để thể hiện sự thay đổi trong định nghĩa dữ liệu.
- 40: Tên rủi ro: Sai sót vé bị hỏng, hệ thống không ghi nhận thông tin / Giải pháp phòng chống: Thiết lập một hệ thống sao lưu dữ liệu, dùng vé điện tử/mã QR và bảo trì thường xuyên cho máy in và scanner. / Giải pháp khắc phục: Thiết lập hệ thống hỗ trợ trực tuyến/trạm trợ giúp cho khách hàng. Có quy trình cập nhật thông tin vé thủ công vào hệ thống khi gặp sự cố.
- 41: Tên rủi ro: Trường hợp camera bị hỏng/biển xe mờ hệ thống không nhận diện biển số / Giải pháp phòng chống: Dùng camera chất lượng cao và bảo dưỡng định kỳ. / Giải pháp khắc phục: Tích hợp phương pháp nhập liệu thủ công và cài đặt cảnh báo khi camera không hoạt động đúng cách
- 42: Tên rủi ro: Lỗi định vị không chính xác có thể ảnh hưởng đến việc giao thông và đỗ xe. / Giải pháp phòng chống: Hiệu chuẩn định kỳ cho hệ thống định vị GPS để đảm bảo độ chính xác. Dùng nhiều phương pháp định / Giải pháp khắc phục: Chuyển đổi sang chế độ định vị thủ công/dựa vào các tín hiệu định vị khác. Cung cấp hướng dẫn cụ thể cho người dùng khi hệ thống định vị bị lỗi.
- 43: Tên rủi ro: Sự cố phần mềm/phần cứng có thể gây ra sự cố trong hệ thống giám sát / Giải pháp phòng chống: Kiểm tra, bảo trì phần cứng định kỳ. Tạo các cơ chế sao lưu tự động và phục hồi sau sự cố cho phần mềm. / Giải pháp khắc phục: Triển khai hệ thống giám sát từ xa. Dựng môi trường thử nghiệm để mô phỏng và sửa chữa lỗi.
- 44: Tên rủi ro: Dữ liệu không chính xác/thiếu hụt có thể dẫn đến quyết định sai lệch / Giải pháp phòng chống: Triển khai các thuật toán kiểm tra dữ liệu. Tạo quy trình xác minh và hậu kiểm dữ liệu định kỳ. / Giải pháp khắc phục: Xây dựng quy trình tái nhập và xác thực dữ liệu nhanh chóng khi phát hiện lỗi.
- 45: Tên rủi ro: Khó khăn trong việc tích hợp các chức năng độc lập, dẫn đến sự không ổn định của hệ thống. / Giải pháp phòng chống: Sử dụng các tiêu chuẩn công nghệ mở và API thích ứng cao. Lập kế hoạch tích hợp đầy đủ và kiểm tra các chức năng trước khi triển khai. / Giải pháp khắc phục: Tổ chức lại dự án phân chia thành các module nhỏ hơn có thể được quản lý và sửa chữa riêng biệt. Cải thiện chất lượng mã.
- 47: Tên rủi ro: Tương tác trong thời gian thực và thao tác với hệ thống bị chậm/báo lỗi / Giải pháp phòng chống: Tối ưu hóa code và kiến trúc hệ thống để giảm độ trễ. Hệ thống có khả năng mở rộng để xử lý tải lượng cao mà không gây chậm trễ. Thực hiện kiểm thử tải đánh giá hiệu suất trong nhiều tình huống / Giải pháp khắc phục: Giám sát hiệu suất thường xuyên để nhận diện vấn đề ngay lập tức. Tăng cấp tài nguyên máy chủ (CPU, RAM) nếu cần thiết. Ghi lại lỗi và xem xét log để xác định nguyên nhân
- 48: Tên rủi ro: Hệ thống không đạt được hiệu suất mong muốn, gây chậm trễ trong quá trình xử lý / Giải pháp phòng chống: Thực hiện code review định kỳ tìm kiếm và sửa chữa các phần code không hiệu quả. Áp dụng các kỹ thuật để giảm thời gian truy suất dữ liệu. / Giải pháp khắc phục: Dùng công cụ đo lường hiệu suất xác định điểm nghẽn và cải thiện. Tối ưu hóa truy vấn và cấu hình cơ sở dữ liệu. Phân chia hệ thống lớn thành các dịch vụ nhỏ hơn, dễ quản lý và tối ưu hơn.
- 50: Tên rủi ro: Xây dựng kế hoạch sơ sài, không bám sát thực tế của một bãi đỗ xe thông minh / Giải pháp phòng chống: Xây dựng kế hoạch dự án,phân tích kỹ lưỡng về yêu cầu và tình hình thực tế. / Giải pháp khắc phục: Rà soát và điều chỉnh định kỳ rà soát và cập nhật kế hoạch dự án để phản ánh chính xác thực tế
- 51: Tên rủi ro: Không đầy đủ các trường hợp phát sinh phi chức năng dẫn đến hệ thống hoạt động không tốt] / Giải pháp phòng chống: Phân tích rủi ro các trường hợp phi chức năng và xây dựng kế hoạch phòng ngừa. Usecase, test Case xây dựng và kiểm thử đầy đủ các trường hợp sử dụng dựa trên phân tích yêu cầu đầy đủ. / Giải pháp khắc phục: Kiểm thử lại hệ thống sau khi thực hiện các thay đổi để đảm bảo không có vấn đề phi chức năng phát sinh.
- 52: Tên rủi ro: Giao diện có thể không đáp ứng tốt trên tất cả các thiết bị và trình duyệt. / Giải pháp phòng chống: Áp dụng thiết kế từ đầu và sử dụng các framework phổ biến hỗ trợ. Thực hiện kiểm thử trên nhiều loại trình duyệt và thiết bị đánh giá tính tương thích. / Giải pháp khắc phục: Tinh chỉnh giao diện dựa trên phản hồi từ kiểm thử để đảm bảo khả năng hiển thị tốt trên mọi nền tảng.
- 53: Tên rủi ro: Kiểm thử API nhận thấy sự không tương thích hoặc sai lệch chức năng / Giải pháp phòng chống: Thực hiện kiểm thử đơn vị đặc biệt cho API để xác định các sai lệch sớm. Kiểm tra lại hợp đồng để đảm bảo các API tuân thủ theo đúng đặc tả đã thỏa thuận. / Giải pháp khắc phục: Phát hiện lỗi, tiến hành debug và sửa lỗi cho phù hợp với yêu cầu chức năng
- 54: Tên rủi ro: Bỏ qua các yếu tố như bảo mật, khả năng chịu tải, và tính dễ sử dụng. / Giải pháp phòng chống: Bảo mật ngay từ giai đoạn thiết kế và phát triển. Kiểm thử tải và stress để đánh giá khả năng chịu đựng của hệ thống. Áp dụng các nguyên tắc thiết kế UI/UX tốt nhất. / Giải pháp khắc phục: Rà soát và giải quyết các vấn đề liên quan đến bảo mật và hiệu suất dựa trên phản hồi từ kiểm thử.
- 55: Tên rủi ro: Chỉ kiểm thử hồi quy các lỗi đã báo cáo / Giải pháp phòng chống: Khám phá kiểm thử tìm kiếm những lỗi tiềm ẩn chưa được báo cáo. Xây dựng và thực hiện các bộ kiểm thử tự động / Giải pháp khắc phục: Mở rộng khả năng kiểm thử bằng cách thêm các test case mới và xác định các điều kiện biên, ngoại lệ.
- 56: Tên rủi ro: Việc xác định, theo dõi và giải quyết lỗi có thể không được thực hiện hiệu quả. / Giải pháp phòng chống: Dùng hệ thống theo dõi lỗi chuyên nghiệp để theo dõi tiến trình và ưu tiên xử lý lỗi. Phân định rõ ràng vai trò và trách nhiệm trong việc quản lý lỗi. / Giải pháp khắc phục: Thực hiện đánh giá định kỳ tình hình xử lý lỗi và điều chỉnh quy trình nếu cần.
- 57: Tên rủi ro: Phát sinh thêm lỗi mới, thay đổi các thông số kỹ thuật dẫn đến sai dữ liệu / Giải pháp phòng chống: Kiểm soát mọi sự điều chỉnh đối với thông số kỹ thuật. Sử dụng phiên bản để quản lý các sự thay đổi trong mã nguồn. / Giải pháp khắc phục: Khi phát sinh lỗi mới, hành động ngay lập tức để sửa chữa và thông báo cho các bên liên quan.

| ID | WBS | Task | Duration | Start | Finish | Predecessors | Complete | Baseline start | Baseline finish | Baseline duration | Total slack | Resources | Work | Actual work | Cost | Baseline cost | Actual cost | Giá trị rủi ro | Cảnh báo mức độ | Khả năng xảy ra của rủi ro(%) | Text10 |
| --- | --- | --- | --- | --- | --- | --- | --- | --- | --- | --- | --- | --- | --- | --- | --- | --- | --- | --- | --- | --- | --- |
| 58 | 1.5 | **5. Bàn giao hệ thống phần mềm** | 3d | 2024-03-20 A | 2024-03-22 A |  | 100% | 2024-03-20 | 2024-03-22 | 3d |  |  | 32h | 32h | 4,320,000 | 4,320,000 | 4,320,000 |  |  |  |  |
| 59 | 1.5.1 | Viết tài liệu hướng dẫn sử dụng | 2d | 2024-03-20 A | 2024-03-21 A | 57 | 100% | 2024-03-20 | 2024-03-21 | 2d |  | Business Analyst 1 | 16h | 16h | 2,240,000 | 2,240,000 | 2,240,000 | 0.2 | 0.2 | 20 | 448000 |
| 60 | 1.5.2 | Hoàn thiện tài liệu kỹ thuật | 1d | 2024-03-22 A | 2024-03-22 A | 59 | 100% | 2024-03-22 | 2024-03-22 | 1d |  | Senior Dev; Tester 2 | 16h | 16h | 2,080,000 | 2,080,000 | 2,080,000 | 0.3 | 0.3 | 30 | 624000 |
| 61 | 1.6 | **6. Bàn giao hệ thống phần mềm** | 6d | 2024-03-26 A | 2024-04-02 A |  | 100% | 2024-03-26 | 2024-04-02 | 6d |  |  | 40h | 40h | 5,200,000 | 5,200,000 | 5,200,000 |  |  |  |  |
| 62 | 1.6.1 | Bản báo cáo các thông tin hệ thống | 1d | 2024-03-26 A | 2024-03-26 A | 60FS+1d | 100% | 2024-03-26 | 2024-03-26 | 1d |  | Business Analyst 2 | 8h | 8h | 1,120,000 | 1,120,000 | 1,120,000 | 0.1 | 0.1 | 10 | 112000 |
| 63 | 1.6.2 | Gửi cho khách hàng các tài liệu liên quan | 1d | 2024-03-27 A | 2024-03-27 A | 62 | 100% | 2024-03-27 | 2024-03-27 | 1d |  | Quản lý dự án (Project Manager) [50%] | 4h | 4h | 600,000 | 600,000 | 600,000 | 0.1 | 0.1 | 10 | 60000 |
| 64 | 1.6.3 | Bàn giao hệ thống | 1d | 2024-03-28 A | 2024-03-28 A | 63 | 100% | 2024-03-28 | 2024-03-28 | 1d |  | Quản lý dự án (Project Manager) [50%] | 4h | 4h | 600,000 | 600,000 | 600,000 | 0.1 | 0.1 | 10 | 60000 |
| 65 | 1.6.4 | Đào tạo sử dụng phần mềm | 3d | 2024-03-29 A | 2024-04-02 A | 64 | 100% | 2024-03-29 | 2024-04-02 | 3d |  | Tester 2 | 24h | 24h | 2,880,000 | 2,880,000 | 2,880,000 | 0.2 | 0.2 | 20 | 576000 |
| 66 | 1.7 | **7. Bảo trì hệ thống** | 4d | 2024-04-25 | 2024-05-02 |  |  | 2024-04-25 | 2024-04-29 | 3d | 0d |  | 64h |  | 8,000,000 | 5,200,000 |  |  |  |  |  |
| 67 | 1.7.1 | Thu thập phản hồi người dùng | 2d | 2024-04-25 | 2024-04-26 | 65FS+15d |  | 2024-04-25 | 2024-04-26 | 2d | 0d | Quản lý dự án (Project Manager) | 16h |  | 2,400,000 | 2,400,000 |  | 0.2 | 0.2 | 20 |  |
| 68 | 1.7.2 | Cập nhật, cải tiến hệ thống | 2d | 2024-04-29 | 2024-05-02 | 67 |  | 2024-04-29 | 2024-04-29 | 1d | 0d | Back End Dev 2; Front End Dev 2; Tester 2 | 48h |  | 5,600,000 | 2,800,000 |  | 0.2 | 0.2 | 10 |  |

Notes:
- 59: Tên rủi ro: Tài liệu chỉ ở mức văn bản hướng dẫn, không dễ hiểu với người dùng cuối / Giải pháp phòng chống: Thiết kế tài liệu hướng dẫn dễ hiểu: hình ảnh, biểu đồ và ví dụ cụ thể. Viết tài liệu ngôn ngữ đơn giản, tránh sử dụng thuật ngữ chuyên môn khó hiểu. / Giải pháp khắc phục: Thu thập phản hồi: khảo sát người dùng cuối về tài liệu hướng dẫn và cải thiện nó dựa trên phản hồi đó.
- 60: Tên rủi ro: Các vấn đề phần Backend khó hiểu, người viết bỏ qua / Giải pháp phòng chống: Viết tài liệu đầy đủ hệ thống, bao gồm cả Backend. Tổ chức cuộc họp đội ngũ để mỗi thành viên hiểu rõ mục tiêu và vấn đề. / Giải pháp khắc phục: Tổ chức các buổi chia sẻ kiến thức giúp mọi người trong dự án hiểu rõ hơn về các phần khó của hệ thống.
- 62: Tên rủi ro: Thông tin về hệ thống có thể không được truyền đạt đầy đủ cho khách hàng / Giải pháp phòng chống: Xây dựng kênh giao tiếp rõ ràng đảm bảo thông tin được chia sẻ một cách minh bạch. Cập nhật định kỳ về tiến độ và các vấn đề của hệ thống / Giải pháp khắc phục: Tổ chức các buổi hỏi đáp để làm rõ mọi nghi vấn và cung cấp thông tin cần thiết cho khách hàng.
- 63: Tên rủi ro: Tài liệu liên quan để kích thước lớn không thể gửi/mất mạng/mất điện / Giải pháp phòng chống: Sử dụng dịch vụ lưu trữ đám mây đảm bảo khả năng truy cập. Nén tài liệu để giảm kích thước file / Giải pháp khắc phục: Gặp vấn đề về kết nối, xem xét việc chuyển tài liệu thông qua ổ cứng di động hoặc các phương tiện offline khác.
- 64: Tên rủi ro: Khách hàng không hiểu cách sử dụng và hoạt động / Giải pháp phòng chống: Tổ chức các buổi đào tạo hướng dẫn khách hàng cách sử dụng hệ thống. Tạo video hướng dẫn sử dụng sản phẩm hoặc hệ thống để khách hàng có thể xem lại. / Giải pháp khắc phục: Thiết lập đường dây nóng hỗ trợ khách hàng để giải đáp nhanh chóng mọi thắc mắc.
- 65: Tên rủi ro: Người dùng cuối có thể không nhận được đào tạo đầy đủ để sử dụng hệ thống một cách hiệu quả. / Giải pháp phòng chống: Xây dựng và cung cấp chương trình đào tạo toàn diện. Cung cấp các tài liệu và tài nguyên học tập / Giải pháp khắc phục: Sử dụng phản hồi từ người dùng để cải thiện chương trình đào tạo và tài liệu hướng dẫn.
- 67: Tên rủi ro: Không thu thập được phản hồi chính xác hoặc kịp thời từ người dùng. / Giải pháp phòng chống: Sử dụng các khảo sát và form phản hồi để thu thập ý kiến từ người dùng / Giải pháp khắc phục: Tăng cường tương tác với người dùng thông qua các buổi hội thảo, diễn đàn trực tuyến và trực tiếp.
- 68: Tên rủi ro: Hệ thống cập nhật/cải tiến không phản ánh chính xác nhu cầu/ vấn đề của người dùng. / Giải pháp phòng chống: Thiết kế tập trung vào người dùng, cập nhật và cải tiến dựa trên nhu cầu / Giải pháp khắc phục: Áp dụng phương pháp phát triển lặp để tích hợp liên tục phản hồi người dùng và điều chỉnh sản phẩm.
